# TPT

How a schedule from MS Project changed from version to version. A marks actual dates.

## Version 1 (saved 2020-04-15, file PROJECT TA1.mpp)

Note of the change: falta saber con qué nombre hay que entregarlo

| ID | WBS | Task | Duration | Start | Finish | Predecessors | Total float | Constraint |
| --- | --- | --- | --- | --- | --- | --- | --- | --- |
| 1 |  | Estudio del sistema a desarrollar | 15d | 2020-02-10 | 2020-02-28 |  |  |  |
| 2 |  | Estudio del sistema completado | 0d | 2020-03-02 | 2020-03-02 | 1 |  |  |
| 3 | 3 | **Requisitos** | 161d | 2020-03-02 | 2020-11-27 | 1 |  |  |
| 4 |  | Definición de requisitos | 10d | 2020-03-02 | 2020-03-31 |  | 156d | finish no earlier than 2020-03-31 |
| 5 |  | Análisis de requisitos | 10d | 2020-04-01 | 2020-04-16 | 4 | 156d |  |
| 6 |  | Especificación de requisitos | 10d | 2020-04-17 | 2020-04-30 | 5 | 156d |  |
| 7 |  | Estudio de requisitos completado | 1d | 2020-05-01 | 2020-05-01 | 3 |  |  |
| 8 | 5 | **Diseño** | 15d | 2020-05-01 | 2020-05-21 |  |  |  |
| 9 |  | Diseño arquitectónico | 15d | 2020-05-01 | 2020-05-21 |  | 142d | start no earlier than 2020-05-01 |
| 10 |  | Diseño interfaz | 8d | 2020-04-22 | 2020-05-01 |  | 156d | start no earlier than 2020-04-22 |
| 11 |  | Diseño completado | 0d | 2020-05-22 | 2020-05-22 | 8 |  |  |
| 12 | 7 | **Desarrollo** | 67d | 2020-05-22 | 2020-09-21 | 8 | 0d |  |
| 13 |  | Codificación y depuración | 60d | 2020-05-22 | 2020-09-10 |  | 0d |  |
| 14 |  | Documentación | 7d | 2020-09-11 | 2020-09-21 | 13 | 0d |  |
| 15 |  | Desarrollo completado | 0d | 2020-09-22 | 2020-09-22 | 12 |  |  |
| 16 | 9 | **Pruebas** | 10d | 2020-09-22 | 2020-10-05 | 12 | 0d |  |
| 17 |  | Pruebas unitarias | 5d | 2020-09-22 | 2020-09-28 |  | 0d |  |
| 18 |  | Pruebas de integración | 5d | 2020-09-29 | 2020-10-05 | 17 | 0d |  |
| 19 |  | Pruebas completadas | 0d | 2020-10-06 | 2020-10-06 | 16 |  |  |
| 20 | 11 | **Instalación del software** | 35d | 2020-10-06 | 2020-11-23 | 16 | 0d |  |
| 21 |  | Evaluación | 14d | 2020-10-06 | 2020-10-23 |  | 0d |  |
| 22 |  | Correción de errores | 7d | 2020-10-26 | 2020-11-03 | 21 | 0d |  |
| 23 |  | Añadir mejoras | 14d | 2020-11-04 | 2020-11-23 | 22 | 0d |  |
| 24 |  | Instalación completada | 0d | 2020-11-24 | 2020-11-24 | 20 |  |  |
| 25 |  | Lanzamiento del sistema | 30d? | 2020-11-24 | 2021-01-18 | 20 |  |  |
| 26 |  | Proyecto completado | 0d | 2021-01-19 | 2021-01-19 | 25 |  |  |
| 27 | 15 | **Reunión semana** | 202d | 2020-02-10 | 2021-01-18 |  | 0d |  |
| 28 |  | Reunión semana 1 | 1d | 2020-02-10 | 2020-02-10 |  | 201d | start no earlier than 2020-02-10 |
| 29 |  | Reunión semana 2 | 1d | 2020-02-17 | 2020-02-17 |  | 196d | start no earlier than 2020-02-17 |
| 30 |  | Reunión semana 3 | 1d | 2020-02-24 | 2020-02-24 |  | 191d | start no earlier than 2020-02-24 |
| 31 |  | Reunión semana 4 | 1d | 2020-03-02 | 2020-03-02 |  | 186d | start no earlier than 2020-03-02 |
| 32 |  | Reunión semana 5 | 1d | 2020-03-09 | 2020-03-09 |  | 181d | start no earlier than 2020-03-09 |
| 33 |  | Reunión semana 6 | 1d | 2020-02-10 | 2020-02-10 |  | 201d |  |
| 34 |  | Reunión semana 7 | 1d | 2020-03-27 | 2020-03-27 |  | 179d | start no earlier than 2020-03-23 |
| 35 |  | Reunión semana 8 | 1d | 2020-03-30 | 2020-03-30 |  | 178d | start no earlier than 2020-03-30 |
| 36 |  | Reunión semana 9 | 1d | 2020-04-06 | 2020-04-06 |  | 173d | start no earlier than 2020-04-06 |
| 37 |  | Reunión semana 10 | 1d | 2020-04-13 | 2020-04-13 |  | 170d | start no earlier than 2020-04-13 |
| 38 |  | Reunión semana 11 | 1d | 2020-04-20 | 2020-04-20 |  | 165d | start no earlier than 2020-04-20 |
| 39 |  | Reunión semana 12 | 1d | 2020-04-27 | 2020-04-27 |  | 160d | start no earlier than 2020-04-27 |
| 40 |  | Reunión semana 13 | 1d | 2020-05-04 | 2020-05-04 |  | 155d | start no earlier than 2020-05-04 |
| 41 |  | Reunión semana 14 | 1d | 2020-05-11 | 2020-05-11 |  | 150d | start no earlier than 2020-05-11 |
| 42 |  | Reunión semana 15 | 1d | 2020-05-18 | 2020-05-18 |  | 145d | start no earlier than 2020-05-18 |
| 43 |  | Reunión semana 16 | 1d | 2020-05-25 | 2020-05-25 |  | 140d | start no earlier than 2020-05-25 |
| 44 |  | Reunión semana 17 | 1d | 2020-06-01 | 2020-06-01 |  | 135d | start no earlier than 2020-06-01 |
| 45 |  | Reunión semana 18 | 1d | 2020-06-08 | 2020-06-08 |  | 130d | start no earlier than 2020-06-08 |
| 46 |  | Reunión semana 19 | 1d | 2020-06-15 | 2020-06-15 |  | 125d | start no earlier than 2020-06-15 |
| 47 |  | Reunión semana 20 | 1d | 2020-06-22 | 2020-06-22 |  | 120d | start no earlier than 2020-06-22 |
| 48 |  | Reunión semana 21 | 1d | 2020-06-29 | 2020-06-29 |  | 115d | start no earlier than 2020-06-29 |
| 49 |  | Reunión semana 22 | 1d | 2020-07-06 | 2020-07-06 |  | 110d | start no earlier than 2020-07-06 |
| 50 |  | Reunión semana 23 | 1d | 2020-07-13 | 2020-07-13 |  | 105d | start no earlier than 2020-07-13 |
| 51 |  | Reunión semana 24 | 1d | 2020-07-20 | 2020-07-20 |  | 100d | start no earlier than 2020-07-20 |
| 52 |  | Reunión semana 25 | 1d | 2020-08-24 | 2020-08-24 |  | 95d | start no earlier than 2020-07-27 |
| 53 |  | Reunión semana 26 | 1d | 2020-08-24 | 2020-08-24 |  | 95d | start no earlier than 2020-08-03 |
| 54 |  | Reunión semana 27 | 1d | 2020-08-24 | 2020-08-24 |  | 95d | start no earlier than 2020-08-10 |
| 55 |  | Reunión semana 28 | 1d | 2020-08-24 | 2020-08-24 |  | 95d | start no earlier than 2020-08-17 |
| 56 |  | Reunión semana 29 | 1d | 2020-08-24 | 2020-08-24 |  | 95d | start no earlier than 2020-08-24 |
| 57 |  | Reunión semana 30 | 1d | 2020-08-31 | 2020-08-31 |  | 90d | start no earlier than 2020-08-31 |
| 58 |  | Reunión semana 31 | 1d | 2020-09-07 | 2020-09-07 |  | 85d | start no earlier than 2020-09-07 |
| 59 |  | Reunión semana 32 | 1d | 2020-09-14 | 2020-09-14 |  | 80d | start no earlier than 2020-09-14 |
| 60 |  | Reunión semana 33 | 1d | 2020-09-21 | 2020-09-21 |  | 75d | start no earlier than 2020-09-21 |
| 61 |  | Reunión semana 34 | 1d | 2020-09-28 | 2020-09-28 |  | 70d | start no earlier than 2020-09-28 |
| 62 |  | Reunión semana 35 | 1d | 2020-10-05 | 2020-10-05 |  | 65d | start no earlier than 2020-10-05 |
| 63 |  | Reunión semana 36 | 1d | 2020-10-12 | 2020-10-12 |  | 60d | start no earlier than 2020-10-12 |
| 64 |  | Reunión semana 37 | 1d | 2020-10-19 | 2020-10-19 |  | 55d | start no earlier than 2020-10-19 |
| 65 |  | Reunión semana 38 | 1d | 2020-10-26 | 2020-10-26 |  | 50d | start no earlier than 2020-10-26 |
| 66 |  | Reunión semana 39 | 1d | 2020-11-02 | 2020-11-02 |  | 45d | start no earlier than 2020-11-02 |
| 67 |  | Reunión semana 40 | 1d | 2020-11-09 | 2020-11-09 |  | 40d | start no earlier than 2020-11-09 |
| 68 |  | Reunión semana 41 | 1d | 2020-11-16 | 2020-11-16 |  | 35d | start no earlier than 2020-11-16 |
| 69 |  | Reunión semana 42 | 1d | 2020-11-23 | 2020-11-23 |  | 30d | start no earlier than 2020-11-23 |
| 70 |  | Reunión semana 43 | 1d | 2020-11-30 | 2020-11-30 |  |  | start no earlier than 2020-11-30 |

| ID | Task | Duration | Start | Finish | Constraint |
| --- | --- | --- | --- | --- | --- |
| 71 | Reunión semana 44 | 1d | 2020-12-07 | 2020-12-07 | start no earlier than 2020-12-07 |
| 72 | Reunión semana 45 | 1d | 2020-12-14 | 2020-12-14 | start no earlier than 2020-12-14 |
| 73 | Reunión semana 46 | 1d | 2020-12-21 | 2020-12-21 | start no earlier than 2020-12-21 |
| 74 | Reunión semana 47 | 1d | 2020-12-28 | 2020-12-28 | start no earlier than 2020-12-28 |
| 75 | Reunión semana 48 | 1d | 2021-01-04 | 2021-01-04 | start no earlier than 2021-01-04 |
| 76 | Reunión semana 49 | 1d | 2021-01-11 | 2021-01-11 | start no earlier than 2021-01-11 |
| 77 | Reunión semana 50 | 1d | 2021-01-18 | 2021-01-18 | start no earlier than 2021-01-18 |

## Version 2 (data date 2020-05-07, saved 2020-04-15, file PROJECT TA2.mpp)

Note of the change: falta saber con qué nombre hay que entregarlo

Last finish stays 2021-01-19. Complete tasks 0 → 10.

Changed:

| ID | Task | Start | Finish | Complete | Total float | Other |
| --- | --- | --- | --- | --- | --- | --- |
| 1 | Estudio del sistema a desarrollar | 2020-02-10 A | 2020-02-28 A | 0% → 100% |  | baseline start none → 2020-02-10; baseline finish none → 2020-02-28 |
| 2 | Estudio del sistema completado | 2020-03-02 A | 2020-03-02 A | 0% → 100% |  | baseline start none → 2020-03-02; baseline finish none → 2020-03-02 |
| 3 | **Requisitos** | 2020-03-02 A |  | 0% → 83% |  | baseline start none → 2020-03-02; baseline finish none → 2020-11-27 |
| 4 | Definición de requisitos | 2020-03-02 A | 2020-03-31 A | 0% → 100% | 156d → none | baseline start none → 2020-03-02; baseline finish none → 2020-03-31 |
| 5 | Análisis de requisitos | 2020-04-01 A | 2020-04-16 A | 0% → 100% | 156d → none | baseline start none → 2020-04-01; baseline finish none → 2020-04-16 |
| 6 | Especificación de requisitos | 2020-04-17 A |  | 0% → 50% |  | baseline start none → 2020-04-17; baseline finish none → 2020-04-30 |
| 7 | Estudio de requisitos completado |  |  |  |  | baseline start none → 2020-05-01; baseline finish none → 2020-05-01 |
| 8 | **Diseño** |  |  |  |  | baseline start none → 2020-05-01; baseline finish none → 2020-05-21 |
| 9 | Diseño arquitectónico |  |  |  |  | baseline start none → 2020-05-01; baseline finish none → 2020-05-21 |
| 10 | Diseño interfaz |  |  |  |  | baseline start none → 2020-04-22; baseline finish none → 2020-05-01 |
| 11 | Diseño completado |  |  |  |  | baseline start none → 2020-05-22; baseline finish none → 2020-05-22 |
| 12 | **Desarrollo** |  |  |  |  | baseline start none → 2020-05-22; baseline finish none → 2020-09-21 |
| 13 | Codificación y depuración |  |  |  |  | baseline start none → 2020-05-22; baseline finish none → 2020-09-10 |
| 14 | Documentación |  |  |  |  | baseline start none → 2020-09-11; baseline finish none → 2020-09-21 |
| 15 | Desarrollo completado |  |  |  |  | baseline start none → 2020-09-22; baseline finish none → 2020-09-22 |
| 16 | **Pruebas** |  |  |  |  | baseline start none → 2020-09-22; baseline finish none → 2020-10-05 |
| 17 | Pruebas unitarias |  |  |  |  | baseline start none → 2020-09-22; baseline finish none → 2020-09-28 |
| 18 | Pruebas de integración |  |  |  |  | baseline start none → 2020-09-29; baseline finish none → 2020-10-05 |
| 19 | Pruebas completadas |  |  |  |  | baseline start none → 2020-10-06; baseline finish none → 2020-10-06 |
| 20 | **Instalación del software** |  |  |  |  | baseline start none → 2020-10-06; baseline finish none → 2020-11-23 |
| 21 | Evaluación |  |  |  |  | baseline start none → 2020-10-06; baseline finish none → 2020-10-23 |
| 22 | Correción de errores |  |  |  |  | baseline start none → 2020-10-26; baseline finish none → 2020-11-03 |
| 23 | Añadir mejoras |  |  |  |  | baseline start none → 2020-11-04; baseline finish none → 2020-11-23 |
| 24 | Instalación completada |  |  |  |  | baseline start none → 2020-11-24; baseline finish none → 2020-11-24 |
| 25 | Lanzamiento del sistema |  |  |  |  | baseline start none → 2020-11-24; baseline finish none → 2021-01-18 |
| 26 | Proyecto completado |  |  |  |  | baseline start none → 2021-01-19; baseline finish none → 2021-01-19 |
| 27 | **Reunión semana** | 2020-02-10 A |  | 0% → 12% |  | baseline start none → 2020-02-10; baseline finish none → 2021-01-18 |
| 28 | Reunión semana 1 | 2020-02-10 A | 2020-02-10 A | 0% → 100% | 201d → none | baseline start none → 2020-02-10; baseline finish none → 2020-02-10 |
| 29 | Reunión semana 2 | 2020-02-17 A | 2020-02-17 A | 0% → 100% | 196d → none | baseline start none → 2020-02-17; baseline finish none → 2020-02-17 |
| 30 | Reunión semana 3 | 2020-02-24 A | 2020-02-24 A | 0% → 100% | 191d → none | baseline start none → 2020-02-24; baseline finish none → 2020-02-24 |
| 31 | Reunión semana 4 | 2020-03-02 A | 2020-03-02 A | 0% → 100% | 186d → none | baseline start none → 2020-03-02; baseline finish none → 2020-03-02 |
| 32 | Reunión semana 5 | 2020-03-09 A | 2020-03-09 A | 0% → 100% | 181d → none | baseline start none → 2020-03-09; baseline finish none → 2020-03-09 |
| 33 | Reunión semana 6 | 2020-02-10 A | 2020-02-10 A | 0% → 100% | 201d → none | baseline start none → 2020-02-10; baseline finish none → 2020-02-10 |
| 34 | Reunión semana 7 |  |  |  |  | baseline start none → 2020-03-27; baseline finish none → 2020-03-27 |
| 35 | Reunión semana 8 |  |  |  |  | baseline start none → 2020-03-30; baseline finish none → 2020-03-30 |
| 36 | Reunión semana 9 |  |  |  |  | baseline start none → 2020-04-06; baseline finish none → 2020-04-06 |
| 37 | Reunión semana 10 |  |  |  |  | baseline start none → 2020-04-13; baseline finish none → 2020-04-13 |
| 38 | Reunión semana 11 |  |  |  |  | baseline start none → 2020-04-20; baseline finish none → 2020-04-20 |
| 39 | Reunión semana 12 |  |  |  |  | baseline start none → 2020-04-27; baseline finish none → 2020-04-27 |
| 40 | Reunión semana 13 |  |  |  |  | baseline start none → 2020-05-04; baseline finish none → 2020-05-04 |
| 41 | Reunión semana 14 |  |  |  |  | baseline start none → 2020-05-11; baseline finish none → 2020-05-11 |
| 42 | Reunión semana 15 |  |  |  |  | baseline start none → 2020-05-18; baseline finish none → 2020-05-18 |
| 43 | Reunión semana 16 |  |  |  |  | baseline start none → 2020-05-25; baseline finish none → 2020-05-25 |
| 44 | Reunión semana 17 |  |  |  |  | baseline start none → 2020-06-01; baseline finish none → 2020-06-01 |
| 45 | Reunión semana 18 |  |  |  |  | baseline start none → 2020-06-08; baseline finish none → 2020-06-08 |
| 46 | Reunión semana 19 |  |  |  |  | baseline start none → 2020-06-15; baseline finish none → 2020-06-15 |
| 47 | Reunión semana 20 |  |  |  |  | baseline start none → 2020-06-22; baseline finish none → 2020-06-22 |
| 48 | Reunión semana 21 |  |  |  |  | baseline start none → 2020-06-29; baseline finish none → 2020-06-29 |
| 49 | Reunión semana 22 |  |  |  |  | baseline start none → 2020-07-06; baseline finish none → 2020-07-06 |
| 50 | Reunión semana 23 |  |  |  |  | baseline start none → 2020-07-13; baseline finish none → 2020-07-13 |
| 51 | Reunión semana 24 |  |  |  |  | baseline start none → 2020-07-20; baseline finish none → 2020-07-20 |
| 52 | Reunión semana 25 |  |  |  |  | baseline start none → 2020-08-24; baseline finish none → 2020-08-24 |
| 53 | Reunión semana 26 |  |  |  |  | baseline start none → 2020-08-24; baseline finish none → 2020-08-24 |
| 54 | Reunión semana 27 |  |  |  |  | baseline start none → 2020-08-24; baseline finish none → 2020-08-24 |
| 55 | Reunión semana 28 |  |  |  |  | baseline start none → 2020-08-24; baseline finish none → 2020-08-24 |
| 56 | Reunión semana 29 |  |  |  |  | baseline start none → 2020-08-24; baseline finish none → 2020-08-24 |
| 57 | Reunión semana 30 |  |  |  |  | baseline start none → 2020-08-31; baseline finish none → 2020-08-31 |
| 58 | Reunión semana 31 |  |  |  |  | baseline start none → 2020-09-07; baseline finish none → 2020-09-07 |
| 59 | Reunión semana 32 |  |  |  |  | baseline start none → 2020-09-14; baseline finish none → 2020-09-14 |
| 60 | Reunión semana 33 |  |  |  |  | baseline start none → 2020-09-21; baseline finish none → 2020-09-21 |
| 61 | Reunión semana 34 |  |  |  |  | baseline start none → 2020-09-28; baseline finish none → 2020-09-28 |
| 62 | Reunión semana 35 |  |  |  |  | baseline start none → 2020-10-05; baseline finish none → 2020-10-05 |
| 63 | Reunión semana 36 |  |  |  |  | baseline start none → 2020-10-12; baseline finish none → 2020-10-12 |
| 64 | Reunión semana 37 |  |  |  |  | baseline start none → 2020-10-19; baseline finish none → 2020-10-19 |
| 65 | Reunión semana 38 |  |  |  |  | baseline start none → 2020-10-26; baseline finish none → 2020-10-26 |
| 66 | Reunión semana 39 |  |  |  |  | baseline start none → 2020-11-02; baseline finish none → 2020-11-02 |
| 67 | Reunión semana 40 |  |  |  |  | baseline start none → 2020-11-09; baseline finish none → 2020-11-09 |
| 68 | Reunión semana 41 |  |  |  |  | baseline start none → 2020-11-16; baseline finish none → 2020-11-16 |
| 69 | Reunión semana 42 |  |  |  |  | baseline start none → 2020-11-23; baseline finish none → 2020-11-23 |
| 70 | Reunión semana 43 |  |  |  |  | baseline start none → 2020-11-30; baseline finish none → 2020-11-30 |

| ID | Task | Other |
| --- | --- | --- |
| 71 | Reunión semana 44 | baseline start none → 2020-12-07; baseline finish none → 2020-12-07 |
| 72 | Reunión semana 45 | baseline start none → 2020-12-14; baseline finish none → 2020-12-14 |
| 73 | Reunión semana 46 | baseline start none → 2020-12-21; baseline finish none → 2020-12-21 |
| 74 | Reunión semana 47 | baseline start none → 2020-12-28; baseline finish none → 2020-12-28 |
| 75 | Reunión semana 48 | baseline start none → 2021-01-04; baseline finish none → 2021-01-04 |
| 76 | Reunión semana 49 | baseline start none → 2021-01-11; baseline finish none → 2021-01-11 |
| 77 | Reunión semana 50 | baseline start none → 2021-01-18; baseline finish none → 2021-01-18 |
